# HKMCApplicationSWPlan

Schedule from MS Project, 2020-02-13 to 2020-07-15, A marks actual dates.

## Calendars

- Standard: Mon-Fri 08:00-12:00, 13:00-17:00; Sat-Sun off. Exceptions (off unless hours are given): 2020-04-01 (KHT Company Celebration Day), 2020-04-15 (KHT Public Holiday), 2020-04-30 (KHT Public Holiday 2).

## Resources

| Resource |
| --- |
| Soo-Jin Ahn |
| Hoon Bae |
| Choong-Yup Shin |
| Philippe Lavole |
| Hyun-Jin Choi |
| Srikanth Mukku |
| Young-Jung Huh |

## Schedule

| ID | WBS | Task | Type | Duration | Start | Finish | Predecessors | Complete | Remaining | Total slack | Free slack | Resources | Work | Actual work | CW |
| --- | --- | --- | --- | --- | --- | --- | --- | --- | --- | --- | --- | --- | --- | --- | --- |
| 1 | 1 | **HKMC 2020 proto** |  | 106.3d | 2020-02-13 A | 2020-07-15 |  | 25% | 80.23d | 0d |  |  | 5503.2h | 1319.8h |  |
| 2 | 1.1 | HKMC R0 SDB | milestone, manual | 0d | 2020-02-13 | 2020-02-13 |  |  |  |  |  |  |  |  | W07-4 - W07-4 |
| 3 | 1.2 | **SW Release R0** |  | 67.2d | 2020-02-13 A | 2020-05-21 |  | 46% | 36.07d | 39.1d |  |  | 3457.6h | 1239h |  |
| 4 | 1.2.1 | **Systems** |  | 16.8d | 2020-02-13 A | 2020-03-06 |  | 80% | 3.36d | 1.2d |  |  | 156.8h | 107.52h |  |
| 5 | 1.2.1.1 | Creation of SDB |  | 16.8d | 2020-02-13 A | 2020-03-06 | 2 | 80% | 3.36d | 1.2d | 0d | Soo-Jin Ahn; Philippe Lavole; Hyun-Jin Choi | 156.8h | 107.52h | W07-4 - W10-5 |
| 6 | 1.2.1.2 | SDB Release | milestone | 0d | 2020-03-06 | 2020-03-06 | 5 |  |  | 1.2d | 0d | Soo-Jin Ahn |  |  | W10-5 - W10-5 |
| 7 | 1.2.2 | **Application SW** |  | 59.2d | 2020-02-25 A | 2020-05-21 |  | 41% | 35.19d | 39.1d |  | Srikanth Mukku | 3292.8h | 1131.48h |  |
| 8 | 1.2.2.1 | **SW Architecture** |  | 47.6d | 2020-03-06 A | 2020-05-18 |  | 43% | 27.03d | 41.9d |  | Soo-Jin Ahn | 1008h | 336.37h |  |
| 9 | 1.2.2.1.1 | SW Adaptors Strategy. |  | 2d | 2020-03-06 A | 2020-03-10 | 6 | 80% | 0.4d | 12d | 10d | Soo-Jin Ahn | 16h | 12.8h | W10-5 - W11-2 |
| 10 | 1.2.2.1.2 | SW Architecture in EA Development |  | 4d | 2020-03-24 A | 2020-04-29 | 9, 32, 53, 73, 30, 50, 70, 25, 90, 93, 19 | 50% | 2d | -18.1d | 0d | Soo-Jin Ahn | 32h | 16h | W13-2 - W18-3 |
| 11 | 1.2.2.1.3 | SW EA Architecture Review |  | 3d | 2020-03-30 A | 2020-05-01 | 10 | 70% | 0.9d | 52.4d | 0d | Soo-Jin Ahn; Choong-Yup Shin; Hoon Bae; Young-Jung Huh | 96h | 67.2h | W14-1 - W18-5 |
| 12 | 1.2.2.1.4 | SW EA Architecture Release | milestone | 0d | 2020-05-01 | 2020-05-01 | 11 |  |  | 52.4d |  | Soo-Jin Ahn |  |  | W18-5 - W18-5 |
| 13 | 1.2.2.1.5 | **SW Architecture ARXML 's Development(Phase1) : VehicleInput, VehicleOutput, LKA, FCA** |  | 7d | 2020-03-12 A | 2020-03-23 |  | 57% | 3d | 1.6d |  | Soo-Jin Ahn | 112h | 64h |  |
| 14 | 1.2.2.1.5.1 | Adaptors Design in Davinci Developer. |  | 4d | 2020-03-12 A | 2020-03-18 | 30, 50, 70, 6, 90 | 80% | 0.8d | 0.8d | 0d | Soo-Jin Ahn | 32h | 25.6h | W11-4 - W12-3 |
| 15 | 1.2.2.1.5.2 | Adaptors ARXML Generation for simulink import. |  | 1d | 2020-03-18 A | 2020-03-19 | 14 | 80% | 0.2d | 1.6d | 0d | Soo-Jin Ahn | 8h | 6.4h | W12-3 - W12-4 |
| 16 | 1.2.2.1.5.3 | Scheduler for ASP SW Integration |  | 1d | 2020-03-19 | 2020-03-20 | 15 |  |  | 1.6d | 0d | Soo-Jin Ahn | 8h |  | W12-4 - W12-5 |
| 17 | 1.2.2.1.5.4 | Scheduler for SW Adaptors. |  | 1d | 2020-03-20 | 2020-03-23 | 16 |  |  | 1.6d | 0d | Soo-Jin Ahn | 8h |  | W12-5 - W13-1 |
| 18 | 1.2.2.1.6 | ARXML's Review for Adaptors Development |  | 2d | 2020-03-23 A | 2020-03-25 | 17 | 80% | 0.4d | 0d |  | Soo-Jin Ahn; Choong-Yup Shin; Hoon Bae; Young-Jung Huh | 64h | 51.2h | W13-1 - W13-3 |
| 19 | 1.2.2.1.7 | ARXML's Release |  | 1d | 2020-03-24 A | 2020-03-25 | 18 | 80% | 0.2d | 0.8d | 0d | Soo-Jin Ahn | 8h | 6.4h | W13-2 - W13-3 |
| 20 | 1.2.2.1.8 | **SW Architecture ARXML 's Development(Phase2) : RadarAdap, STC?, CanBusOff, DTC, Diag** |  | 22.4d | 2020-04-14 A | 2020-05-18 |  |  | 22.4d |  |  | Soo-Jin Ahn | 227.2h | 32h |  |
| 21 | 1.2.2.1.8.1 | Adaptors Design in Davinci Developer. |  | 4d | 2020-04-14 | 2020-04-20 |  |  |  | 0d |  | Soo-Jin Ahn | 32h |  | W16-2 - W17-1 |
| 22 | 1.2.2.1.8.2 | Adaptors ARXML Generation for BSW & ASW |  | 2d | 2020-04-21 | 2020-04-22 | 21 |  |  | 0d |  | Soo-Jin Ahn | 16h |  | W17-2 - W17-3 |
| 23 | 1.2.2.1.9 | Create Hkmc WorkSpace for Davinci Configurator(dcf) |  | 1d | 2020-04-23 | 2020-04-23 | 22 |  |  | 0d |  | Soo-Jin Ahn | 8h |  | W17-4 - W17-4 |
| 24 | 1.2.2.1.10 | ARXML's Review for Basic SW & Adaptors Development |  | 2d | 2020-04-24 | 2020-04-27 | 23 |  |  | 0d |  | Soo-Jin Ahn; Choong-Yup Shin; Hoon Bae; Young-Jung Huh | 64h |  | W17-5 - W18-1 |
| 25 | 1.2.2.1.11 | ARXML's Release | milestone | 0d | 2020-04-27 | 2020-04-27 | 24 |  |  | 0d |  | Soo-Jin Ahn |  |  | W18-1 - W18-1 |

Notes:
- 2: Starting MileStone
- 3: FLC Variant : / F1. FCA-Car/Ped/ F2. LKA-L / Assumption from Me : / Needed Adaptors on FLC SW: / A1 : FCA-CAr/Ped / A2 : LKA -L / A3 : Vehicle Input / A4 : Vehicle Output
- 5: This is a FO Task, but at present supported by SW Architect / This need to be done for all features
- 9: This is not yet reflected in the work flow diagram
- 10: SW Architecture for Adaptors

| ID | WBS | Task | Type | Duration | Start | Finish | Predecessors | Complete | Remaining | Total slack | Free slack | Resources | Work | Actual work | CW |
| --- | --- | --- | --- | --- | --- | --- | --- | --- | --- | --- | --- | --- | --- | --- | --- |
| 26 | 1.2.2.2 | **Adaptor 1 : FCA-Car/Ped Adaptor Development** |  | 17.5d | 2020-03-06 A | 2020-04-02 |  | 57% | 7.5d | 0.4d |  | Hoon Bae | 282.4h | 173.6h |  |
| 27 | 1.2.2.2.1 | **Feature_SignalInterfaceMatrix** |  | 2d | 2020-03-06 A | 2020-03-10 |  | 80% | 0.4d | 1.2d |  | Hoon Bae | 40h | 32h |  |
| 28 | 1.2.2.2.1.1 | Creation of SignalInterfaceMatrix |  | 12h | 2020-03-06 A | 2020-03-10 | 6 | 80% | 2.4h | 0.4d | 0d | Hoon Bae | 12h | 9.6h | W10-5 - W11-2 |
| 29 | 1.2.2.2.1.2 | Review of SignalInterface Matrix |  | 4h | 2020-03-10 A | 2020-03-10 | 28 | 80% | 0.8h | 1.2d | 0d | Hoon Bae; Soo-Jin Ahn; Young-Jung Huh | 12h | 9.6h | W11-2 - W11-2 |
| 30 | 1.2.2.2.1.3 | Release of FCA Car7Ped Adaptor SignalInterface Matrix | milestone | 0d | 2020-03-10 A | 2020-03-10 | 29 | 80% | 0d | 1.2d | 0d | Hoon Bae |  |  | W11-2 - W11-2 |
| 31 | 1.2.2.2.2 | Adaptor Detailed Design( if it is a small gap FD has to do that, if it is a big gap FO has to do that). | milestone | 0d | 2020-03-12 | 2020-03-12 | 27, 70 |  |  | 2.2d | 0d | Hoon Bae |  |  | W11-4 - W11-4 |
| 32 | 1.2.2.2.3 | Adaptor Detailed Design Review |  | 1d | 2020-03-12 | 2020-03-13 | 31 |  |  | 2.2d | 0d | Hoon Bae; Soo-Jin Ahn; Young-Jung Huh | 24h |  | W11-4 - W11-5 |
| 33 | 1.2.2.2.4 | Release of FCA Car/Ped Adaptor Detailed Design | milestone | 0d | 2020-03-13 | 2020-03-13 | 32 |  |  | 2.2d | 0d | Hoon Bae |  |  | W11-5 - W11-5 |
| 34 | 1.2.2.2.5 | **Adaptor Simulink Development** |  | 11.5d | 2020-03-12 A | 2020-03-30 |  | 80% | 2.3d | 0.4d |  | Hoon Bae | 144h | 115.2h |  |
| 35 | 1.2.2.2.5.1 | Simulink Design Development |  | 4d | 2020-03-12 A | 2020-03-18 | 33 | 80% | 0.8d | 4.8d | 0d | Hoon Bae | 32h | 25.6h | W11-4 - W12-3 |
| 36 | 1.2.2.2.5.2 | Simulink Import of ARXML & linking to Development Models |  | 4h | 2020-03-26 A | 2020-03-27 | 75, 19 | 80% | 0.8h | 0.4d | 0d | Hoon Bae | 4h | 3.2h | W13-4 - W13-5 |
| 37 | 1.2.2.2.5.3 | Simulink Design Release & Review |  | 4h | 2020-03-27 A | 2020-03-27 | 36 | 80% | 0.8h | 0.4d | 0d | Hoon Bae; Soo-Jin Ahn; Young-Jung Huh | 12h | 9.6h | W13-5 - W13-5 |
| 38 | 1.2.2.2.5.4 | Adaptor Code Generation from Simulink. |  | 4h | 2020-03-27 A | 2020-03-30 | 37 | 80% | 0.8h | 0.4d | 0d | Hoon Bae | 4h | 3.2h | W13-5 - W14-1 |
| 39 | 1.2.2.2.5.5 | Release of FCA-Car/Ped Adaptor Simulink Design | milestone | 0d | 2020-03-30 | 2020-03-30 | 38 |  |  | 0.4d | 0d | Hoon Bae |  |  | W14-1 - W14-1 |
| 40 | 1.2.2.2.6 | **SW Unit Test Specification & Test Cases Development** |  | 0d | 2020-03-30 | 2020-03-30 |  |  |  | 0.4d |  | Hoon Bae |  |  |  |
| 41 | 1.2.2.2.6.1 | Adaptor Unit Test Specification. | milestone | 0d | 2020-03-30 | 2020-03-30 | 39 |  |  | 0.4d | 0d | Hoon Bae |  |  | W14-1 - W14-1 |
| 42 | 1.2.2.2.6.2 | Adaptor Unit Test Cases Implementation. | milestone | 0d | 2020-03-30 | 2020-03-30 | 41 |  |  | 0.4d | 0d | Hoon Bae |  |  | W14-1 - W14-1 |
| 43 | 1.2.2.2.7 | Adaptor Unit Test Execution and its report generation. | milestone | 0d | 2020-03-30 | 2020-03-30 | 42 |  |  | 0.4d | 0d | Hoon Bae |  |  | W14-1 - W14-1 |
| 44 | 1.2.2.2.8 | SW Source Code & Unit Test Report Review |  | 2d | 2020-03-30 | 2020-04-02 | 43 |  |  | 0.4d | 0d | Hoon Bae; Soo-Jin Ahn; Young-Jung Huh | 48h |  | W14-1 - W14-4 |
| 45 | 1.2.2.2.9 | Release of FCA-Car/Ped SW Source Code & SW Unit Test Report | milestone | 0d | 2020-04-02 | 2020-04-02 | 44 |  |  | 0.4d | 0d | Hoon Bae |  |  | W14-4 - W14-4 |
| 46 | 1.2.2.3 | **Adaptor 2 : LKA-L Adaptor Development** |  | 35.5d | 2020-03-06 A | 2020-04-29 |  | 52% | 17.12d | -18.6d | 0d | Choong-Yup Shin | 530.4h | 133.6h |  |
| 47 | 1.2.2.3.1 | **Signal Matrix preparation for Adaptor for architecture support.** |  | 2d | 2020-03-06 | 2020-03-10 |  |  |  | 1.2d |  | Choong-Yup Shin | 40h |  |  |
| 48 | 1.2.2.3.1.1 | Creation of SignalInterfaceMatrix |  | 12h | 2020-03-06 | 2020-03-10 | 6 |  |  | 1.2d | 0d | Choong-Yup Shin | 12h |  | W10-5 - W11-2 |
| 49 | 1.2.2.3.1.2 | Review & Release of SignalInterface Matrix |  | 4h | 2020-03-10 | 2020-03-10 | 48 |  |  | 1.2d | 0d | Soo-Jin Ahn; Choong-Yup Shin; Young-Jung Huh | 12h |  | W11-2 - W11-2 |
| 50 | 1.2.2.3.1.3 | Release of LKA-L Adaptor SignalInterface Matrix | milestone | 0d | 2020-03-10 | 2020-03-10 | 49 |  |  | 1.2d | 0d | Choong-Yup Shin |  |  | W11-2 - W11-2 |
| 51 | 1.2.2.3.2 | Adaptor Detailed Design( if it is a small gap FD has to do that, if it is a big gap FO has to do that). | milestone | 0d | 2020-03-12 | 2020-03-12 | 50, 90 |  |  | 3.2d | 0d | Choong-Yup Shin |  |  | W11-4 - W11-4 |
| 52 | 1.2.2.3.3 | Adaptor Detailed Design Review | milestone | 0d | 2020-03-12 | 2020-03-12 | 51 |  |  | 3.2d | 0d | Soo-Jin Ahn; Choong-Yup Shin; Young-Jung Huh |  |  | W11-4 - W11-4 |
| 53 | 1.2.2.3.4 | Release of LKA-L Adaptor Detailed Design | milestone | 0d | 2020-03-12 | 2020-03-12 | 52 |  |  | 3.2d | 0d | Choong-Yup Shin |  |  | W11-4 - W11-4 |

Notes:
- 27: This is the signal interface matrix at / SWC level for supporting Archtecture
- 31: not applicable for R0
- 32: not applicable for R0
- 33: not applicable for R0
- 40: not applicable for R0
- 41: not applicable for R0
- 42: not applicable for R0
- 43: not applicable for R0
- 51: not applicable for R0
- 52: not applicable for R0
- 53: not applicable for R0

| ID | WBS | Task | Type | Duration | Start | Finish | Predecessors | Complete | Remaining | Total slack | Free slack | Resources | Work | Actual work | CW |
| --- | --- | --- | --- | --- | --- | --- | --- | --- | --- | --- | --- | --- | --- | --- | --- |
| 54 | 1.2.2.3.5 | **Adaptor Simulink Development** |  | 30.5d | 2020-03-12 A | 2020-04-28 |  | 80% | 6.1d | -18.6d | 0d | Choong-Yup Shin | 296h | 115.2h |  |
| 55 | 1.2.2.3.5.1 | Simulink Design Development |  | 4d | 2020-03-12 A | 2020-03-18 | 53 | 80% | 0.8d | 4.8d | 0d | Choong-Yup Shin | 32h | 25.6h | W11-4 - W12-3 |
| 56 | 1.2.2.3.5.2 | Simulink Import of ARXML & linking to Development Models |  | 4h | 2020-03-26 A | 2020-04-28 | 25, 95, 19 | 80% | 0.8h | -19.4d | 0d | Choong-Yup Shin | 4h | 3.2h | W13-4 - W18-2 |
| 57 | 1.2.2.3.5.3 | Simulink Design Release & Review |  | 4h | 2020-03-27 A | 2020-04-28 | 56 | 80% | 0.8h | -19d | 0d | Choong-Yup Shin; Soo-Jin Ahn; Young-Jung Huh | 12h | 9.6h | W13-5 - W18-2 |
| 58 | 1.2.2.3.5.4 | Adaptor Code Generation from Simulink. |  | 4h | 2020-03-27 A | 2020-04-28 | 57 | 80% | 0.8h | -18.6d | 0d | Choong-Yup Shin | 4h | 3.2h | W13-5 - W18-2 |
| 59 | 1.2.2.3.5.5 | Release of LKA-L Adaptor Simulink Design | milestone | 0h | 2020-04-28 | 2020-04-28 | 58 |  |  | -18.6d | 0d | Choong-Yup Shin |  |  | W18-2 - W18-2 |
| 60 | 1.2.2.3.6 | **SW Unit Test Specification & Test Cases Development** |  | 0d | 2020-04-28 | 2020-04-28 |  |  |  | -18.6d | 0d | Choong-Yup Shin |  |  |  |
| 61 | 1.2.2.3.6.1 | Adaptor Unit Test Specification. | milestone | 0d | 2020-04-28 | 2020-04-28 | 59 |  |  | -18.6d | 0d | Choong-Yup Shin |  |  | W18-2 - W18-2 |
| 62 | 1.2.2.3.6.2 | Adaptor Unit Test Cases Implementation. | milestone | 0d | 2020-04-28 | 2020-04-28 | 61 |  |  | -18.6d | 0d | Choong-Yup Shin |  |  | W18-2 - W18-2 |
| 63 | 1.2.2.3.7 | Adaptor Unit Test Execution and its report generation. | milestone | 0d | 2020-04-28 | 2020-04-28 | 62 |  |  | -18.6d | 0d | Choong-Yup Shin |  |  | W18-2 - W18-2 |
| 64 | 1.2.2.3.8 | SW Source Code & Unit Test Report Review |  | 1d | 2020-04-28 | 2020-04-29 | 63 |  |  | -18.6d | 0d | Choong-Yup Shin; Soo-Jin Ahn; Young-Jung Huh | 24h |  | W18-2 - W18-3 |
| 65 | 1.2.2.3.9 | Release of LKA_L SW Source Code & Unit Test Report | milestone | 0d | 2020-04-29 | 2020-04-29 | 64 |  |  | -18.6d | 0d | Choong-Yup Shin |  |  | W18-3 - W18-3 |
| 66 | 1.2.2.4 | **Vehicle Input Adaptor** |  | 38.4d | 2020-03-10 A | 2020-05-07 |  | 60% | 15.36d | 39.1d |  | Hoon Bae | 678.4h | 240.62h |  |
| 67 | 1.2.2.4.1 | **Signal Matrix preparation for Adaptor for architecture support.** |  | 2d | 2020-03-10 A | 2020-03-12 |  | 80% | 0.4d | 2.2d |  |  | 24h | 19.2h |  |
| 68 | 1.2.2.4.1.1 | Creation of SignalInterfaceMatrix |  | 12h | 2020-03-10 A | 2020-03-12 | 6, 30 | 80% | 2.4h | 0.4d | 0d | Hoon Bae | 12h | 9.6h | W11-2 - W11-4 |
| 69 | 1.2.2.4.1.2 | Review & Release of SignalInterface Matrix |  | 4h | 2020-03-12 A | 2020-03-12 | 68 | 80% | 0.8h | 2.2d | 0d | Soo-Jin Ahn; Hoon Bae; Young-Jung Huh | 12h | 9.6h | W11-4 - W11-4 |
| 70 | 1.2.2.4.1.3 | Release of Veh_Inp Adaptor SignalInterface Matrix | milestone | 0d | 2020-03-12 A | 2020-03-12 | 69 | 80% | 0d | 2.2d | 0d | Hoon Bae |  |  | W11-4 - W11-4 |
| 71 | 1.2.2.4.2 | Adaptor Detailed Design( if it is a small gap FD has to do that, if it is a big gap FO has to do that). | milestone | 0d | 2020-03-18 | 2020-03-18 | 67, 35 |  |  | 4.8d | 0d | Hoon Bae |  |  | W12-3 - W12-3 |
| 72 | 1.2.2.4.3 | Adaptor Detailed Design Review | milestone | 0d | 2020-03-18 | 2020-03-18 | 71 |  |  | 4.8d | 0d | Soo-Jin Ahn; Hoon Bae; Young-Jung Huh |  |  | W12-3 - W12-3 |
| 73 | 1.2.2.4.4 | Release of Veh_Inp Adaptor Detailed Design | milestone | 0d | 2020-03-18 | 2020-03-18 | 72 |  |  | 4.8d | 0d | Hoon Bae |  |  | W12-3 - W12-3 |
| 74 | 1.2.2.4.5 | **Adaptor Simulink Development** |  | 28.4d | 2020-03-18 A | 2020-05-01 |  | 62% | 10.73d | 39.1d |  | Hoon Bae | 307.2h | 113.42h |  |
| 75 | 1.2.2.4.5.1 | Simulink Design Development |  | 6d | 2020-03-18 A | 2020-03-26 | 73 | 80% | 1.2d | 0.4d | 0d | Hoon Bae | 48h | 38.4h | W12-3 - W13-4 |
| 76 | 1.2.2.4.5.2 | Simulink Import of ARXML & linking to Development Models |  | 4h | 2020-04-02 A | 2020-04-28 | 25, 45, 19 | 80% | 0.8h | -15.9d | 0d | Hoon Bae | 4h | 3.2h | W14-4 - W18-2 |
| 77 | 1.2.2.4.5.3 | Simulink Design Release & Review |  | 4h | 2020-04-02 A | 2020-04-28 | 76 | 80% | 0.8h | 39.1d | 0d | Hoon Bae; Soo-Jin Ahn; Young-Jung Huh | 12h | 9.6h | W14-4 - W18-2 |
| 78 | 1.2.2.4.5.4 | Adaptor Code Generation from Simulink. |  | 2d | 2020-04-28 | 2020-05-01 | 77 |  |  | 39.1d | 0d | Hoon Bae | 16h |  | W18-2 - W18-5 |
| 79 | 1.2.2.4.5.5 | Release of Veh_Inp Adaptor Simulink Design | milestone | 0d | 2020-05-01 | 2020-05-01 | 78 |  |  | 39.1d | 0d | Hoon Bae |  |  | W18-5 - W18-5 |

Notes:
- 60: not applicable for R0
- 61: not applicable for R0
- 62: not applicable for R0
- 63: not applicable for R0
- 64: not applicable for R0
- 65: not applicable for R0
- 71: not applicable for R0
- 72: not applicable for R0
- 73: not applicable for R0

| ID | WBS | Task | Type | Duration | Start | Finish | Predecessors | Complete | Remaining | Total slack | Free slack | Resources | Work | Actual work | CW |
| --- | --- | --- | --- | --- | --- | --- | --- | --- | --- | --- | --- | --- | --- | --- | --- |
| 80 | 1.2.2.4.6 | **SW Unit Test Specification & Test Cases Development** |  | 2d | 2020-05-01 | 2020-05-05 |  |  |  | 39.1d |  | Hoon Bae | 16h |  |  |
| 81 | 1.2.2.4.6.1 | Adaptor Unit Test Specification. | milestone | 0d | 2020-05-01 | 2020-05-04 | 79 |  |  | 39.1d | 0d | Hoon Bae |  |  | W18-5 - W19-1 |
| 82 | 1.2.2.4.6.2 | Adaptor Unit Test Cases Implementation. | milestone | 0d | 2020-05-04 | 2020-05-05 | 81 |  |  | 39.1d | 0d | Hoon Bae |  |  | W19-1 - W19-2 |
| 83 | 1.2.2.4.7 | Adaptor Unit Test Execution and its report generation. | milestone | 0d | 2020-05-05 | 2020-05-06 | 82 |  |  | 39.1d | 0d | Hoon Bae |  |  | W19-2 - W19-3 |
| 84 | 1.2.2.4.8 | SW Source Code & Unit Test Report Review |  | 1d | 2020-05-06 | 2020-05-07 | 83 |  |  | 39.1d | 0d | Soo-Jin Ahn; Hoon Bae; Young-Jung Huh | 24h |  | W19-3 - W19-4 |
| 85 | 1.2.2.4.9 | Release of Vhe_In Adaptor SW Source Code & Unit Test Report | milestone | 0d | 2020-05-07 | 2020-05-07 | 84 |  |  | 39.1d | 0d | Hoon Bae |  |  | W19-4 - W19-4 |
| 86 | 1.2.2.5 | **Vehicle Output Adaptor** |  | 37.1d | 2020-03-10 A | 2020-05-05 |  | 57% | 16.08d | 50.4d |  | Choong-Yup Shin | 553.6h | 149.96h |  |
| 87 | 1.2.2.5.1 | **Signal Matrix preparation for Adaptor for architecture support.** |  | 2d | 2020-03-10 A | 2020-03-12 |  | 80% | 0.4d | 3.2d |  |  | 24h | 19.2h |  |
| 88 | 1.2.2.5.1.1 | Creation of SignalInterfaceMatrix |  | 12h | 2020-03-10 A | 2020-03-12 | 6, 50 | 80% | 2.4h | 0.4d | 0d | Choong-Yup Shin | 12h | 9.6h | W11-2 - W11-4 |
| 89 | 1.2.2.5.1.2 | Review & Release of SignalInterface Matrix |  | 4h | 2020-03-12 A | 2020-03-12 | 88 | 80% | 0.8h | 3.2d | 0d | Soo-Jin Ahn; Choong-Yup Shin; Young-Jung Huh | 12h | 9.6h | W11-4 - W11-4 |
| 90 | 1.2.2.5.1.3 | Release of Veh_Out Adaptor SignalInterface Matrix | milestone | 0d | 2020-03-12 A | 2020-03-12 | 89 | 80% | 0d | 3.2d | 0d | Choong-Yup Shin |  |  | W11-4 - W11-4 |
| 91 | 1.2.2.5.2 | Adaptor Detailed Design( if it is a small gap FD has to do that, if it is a big gap FO has to do that). | milestone | 0d | 2020-03-18 | 2020-03-18 | 87, 55 |  |  | 4.8d | 0d | Choong-Yup Shin |  |  | W12-3 - W12-3 |
| 92 | 1.2.2.5.3 | Adaptor Detailed Design Review | milestone | 0d | 2020-03-18 | 2020-03-18 | 91 |  |  | 81.5d |  | Soo-Jin Ahn; Choong-Yup Shin; Young-Jung Huh |  |  | W12-3 - W12-3 |
| 93 | 1.2.2.5.4 | Release of Veh_Out Adaptor Detailed Design | milestone | 0d | 2020-03-18 | 2020-03-18 | 91 |  |  | 4.8d | 0d | Choong-Yup Shin |  |  | W12-3 - W12-3 |
| 94 | 1.2.2.5.5 | **Adaptor Simulink Development** |  | 30.1d | 2020-03-18 A | 2020-05-04 |  | 58% | 12.71d | 40.4d |  | Choong-Yup Shin | 320.8h | 94.75h |  |
| 95 | 1.2.2.5.5.1 | Simulink Design Development |  | 6d | 2020-03-18 A | 2020-03-26 | 93 | 80% | 1.2d | 0.4d | 0d | Choong-Yup Shin | 48h | 38.4h | W12-3 - W13-4 |
| 96 | 1.2.2.5.5.2 | Simulink Import of ARXML & linking to Development Models |  | 4h | 2020-03-31 A | 2020-04-29 | 25, 65, 19 | 80% | 0.8h | 40.4d | 0d | Choong-Yup Shin | 4h | 3.2h | W14-2 - W18-3 |
| 97 | 1.2.2.5.5.3 | Simulink Design Release & Review |  | 4h | 2020-04-29 | 2020-04-29 | 96 |  |  | 40.4d | 0d | Choong-Yup Shin; Soo-Jin Ahn; Young-Jung Huh | 12h |  | W18-3 - W18-3 |
| 98 | 1.2.2.5.5.4 | Adaptor Code Generation from Simulink. |  | 2d | 2020-04-29 | 2020-05-04 | 97 |  |  | 40.4d | 0d | Choong-Yup Shin | 16h |  | W18-3 - W19-1 |
| 99 | 1.2.2.5.5.5 | Release of Veh_Out Adaptor Simulink Design | milestone | 0d | 2020-05-04 | 2020-05-04 | 98 |  |  | 40.4d | 0d | Choong-Yup Shin |  |  | W19-1 - W19-1 |
| 100 | 1.2.2.5.6 | **SW Unit Test Specification & Test Cases Development** |  | 0d | 2020-05-04 | 2020-05-04 |  |  |  | 40.4d |  | Choong-Yup Shin |  |  |  |
| 101 | 1.2.2.5.6.1 | Adaptor Unit Test Specification. | milestone | 0d | 2020-05-04 | 2020-05-04 | 99 |  |  | 40.4d | 0d | Choong-Yup Shin |  |  | W19-1 - W19-1 |
| 102 | 1.2.2.5.6.2 | Adaptor Unit Test Cases Implementation. | milestone | 0d | 2020-05-04 | 2020-05-04 | 101 |  |  | 40.4d | 0d | Choong-Yup Shin |  |  | W19-1 - W19-1 |
| 103 | 1.2.2.5.7 | Adaptor Unit Test Execution and its report generation. | milestone | 0d | 2020-05-04 | 2020-05-04 | 102 |  |  | 40.4d | 0d | Choong-Yup Shin |  |  | W19-1 - W19-1 |
| 104 | 1.2.2.5.8 | SW Source Code & Unit Test Report Review |  | 1d | 2020-05-04 | 2020-05-05 | 103 |  |  | 40.4d | 0d | Choong-Yup Shin; Soo-Jin Ahn; Young-Jung Huh | 24h |  | W19-1 - W19-2 |
| 105 | 1.2.2.5.9 | Release of Veh_Out Adaptor SW Source Code & Unit Test Report | milestone | 0d | 2020-05-05 | 2020-05-05 | 104 |  |  | 40.4d | 1.3d | Choong-Yup Shin |  |  | W19-2 - W19-2 |

Notes:
- 80: not applicable for R0
- 81: not applicable for R0
- 82: not applicable for R0
- 83: not applicable for R0
- 84: not applicable for R0
- 85: not applicable for R0
- 91: not applicable for R0
- 92: not applicable for R0
- 93: not applicable for R0
- 100: not applicable for R0
- 101: not applicable for R0
- 102: not applicable for R0
- 103: not applicable for R0
- 104: not applicable for R0
- 105: not applicable for R0

| ID | WBS | Task | Type | Duration | Start | Finish | Predecessors | Total slack | Free slack | Resources | Work | Actual work | CW |
| --- | --- | --- | --- | --- | --- | --- | --- | --- | --- | --- | --- | --- | --- |
| 106 | 1.2.2.6 | **SW Integration** |  | 59.2d | 2020-02-25 | 2020-05-21 |  | 39.1d |  |  |  |  |  |
| 107 | 1.2.2.6.1 | SW Integration Test Specification. |  | 4d | 2020-02-25 | 2020-02-28 |  | 92.3d | 0d |  |  |  | W09-2 - W09-5 |
| 108 | 1.2.2.6.2 | SW Integration Test Cases Implementation. |  | 2d | 2020-03-02 | 2020-03-03 | 107 | 92.3d |  |  |  |  | W10-1 - W10-2 |
| 109 | 1.2.2.6.3 | SW Integration. |  | 4d | 2020-05-07 | 2020-05-13 | 44, 65, 85, 105 | 39.1d | 0d |  |  |  | W19-4 - W20-3 |
| 110 | 1.2.2.6.4 | SW Integration Test execution & Its Rerport Generation. |  | 2d | 2020-05-13 | 2020-05-15 | 109 | 39.1d | 0d |  |  |  | W20-3 - W20-5 |
| 111 | 1.2.2.6.5 | SW Version Management. |  | 3d | 2020-05-13 | 2020-05-18 | 109 | 41.1d | 0d |  |  |  | W20-3 - W21-1 |
| 112 | 1.2.2.6.6 | SW Release Notes. |  | 1d | 2020-05-18 | 2020-05-19 | 111 | 41.1d |  |  |  |  | W21-1 - W21-2 |
| 113 | 1.2.2.6.7 | HKMC SW Integration |  | 1d | 2020-05-15 | 2020-05-18 | 110 | 39.1d | 0d |  |  |  | W20-5 - W21-1 |
| 114 | 1.2.2.6.8 | HKMC Application SW Release | milestone | 0d | 2020-05-18 | 2020-05-18 | 113 | 39.1d | 0d |  |  |  | W21-1 - W21-1 |
| 115 | 1.2.2.6.9 | App SW Integration Testing on MCU |  | 2d | 2020-05-19 | 2020-05-21 | 118 | 39.1d | 0d |  |  |  | W21-2 - W21-4 |
| 116 | 1.2.2.6.10 | HKMC Application SW Release for Testing | milestone | 0d | 2020-05-21 | 2020-05-21 | 115 | 39.1d |  |  |  |  | W21-4 - W21-4 |
| 117 | 1.2.3 | **Basic SW** |  | 1d | 2020-05-18 | 2020-05-19 |  | 39.1d |  |  | 8h |  |  |
| 118 | 1.2.3.1 | SW Integration Review |  | 1d | 2020-05-18 | 2020-05-19 | 114 | 39.1d | 0d | Young-Jung Huh | 8h |  | W21-1 - W21-2 |
| 119 | 1.3 | HKMC R2 SDB | milestone, manual | 0d | 2020-04-06 | 2020-04-06 |  |  |  |  |  |  | W15-1 - W15-1 |
| 120 | 1.4 | **SW Release R2** |  | 70.3d | 2020-04-06 | 2020-07-15 |  | 0d |  |  | 2045.6h | 80.8h |  |
| 121 | 1.4.1 | **Systems** |  | 38.8d | 2020-04-06 | 2020-06-01 |  | 0d |  |  | 156.8h |  |  |
| 122 | 1.4.1.1 | Creation of SDB |  | 16.8d | 2020-04-06 | 2020-06-01 | 119 | 0d |  | Soo-Jin Ahn; Philippe Lavole; Hyun-Jin Choi | 156.8h |  | W15-1 - W23-1 |
| 123 | 1.4.1.2 | SDB Release | milestone | 0d | 2020-06-01 | 2020-06-01 | 122 | 0d |  | Soo-Jin Ahn |  |  | W23-1 - W23-1 |
| 124 | 1.4.2 | **Application SW** |  | 70.3d | 2020-04-06 | 2020-07-15 |  | 0d |  | Srikanth Mukku | 1888.8h | 80.8h |  |
| 125 | 1.4.2.1 | **SW Architecture** |  | 19d | 2020-06-01 | 2020-06-26 |  | 6d |  | Soo-Jin Ahn | 408h |  |  |
| 126 | 1.4.2.1.1 | SW Adaptors Strategy. |  | 2d | 2020-06-01 | 2020-06-03 | 123 | 22.5d | 10d | Soo-Jin Ahn | 16h |  | W23-1 - W23-3 |
| 127 | 1.4.2.1.2 | SW Architecture in EA Development |  | 4d | 2020-06-17 | 2020-06-23 | 126, 143, 164, 184, 141, 161, 181, 136, 201, 204 | 12.5d | 0d | Soo-Jin Ahn | 32h |  | W25-3 - W26-2 |
| 128 | 1.4.2.1.3 | SW EA Architecture Review |  | 3d | 2020-06-23 | 2020-06-26 | 127 | 12.5d | 0d | Soo-Jin Ahn; Choong-Yup Shin; Hoon Bae | 72h |  | W26-2 - W26-5 |
| 129 | 1.4.2.1.4 | SW EA Architecture Release | milestone | 0d | 2020-06-26 | 2020-06-26 | 128 | 12.5d |  | Soo-Jin Ahn |  |  | W26-5 - W26-5 |

Notes:
- 113: (Buildable Application SW on GIT repo together with HKMC Basic SW
- 115: Need to Follow Basic SW Integration Release
- 119: Starting MileStone
- 120: FLC Variant : / F1. FCA-Car/Ped/ F2. LKA-L / Assumption from Me : / Needed Adaptors on FLC SW: / A1 : FCA-CAr/Ped / A2 : LKA -L / A3 : Vehicle Input / A4 : Vehicle Output
- 122: This is a FO Task, but at present supported by SW Architect / This need to be done for all features
- 126: This is not yet reflected in the work flow diagram
- 127: SW Architecture for Adaptors

| ID | WBS | Task | Type | Duration | Start | Finish | Predecessors | Total slack | Free slack | Resources | Work | Actual work | CW |
| --- | --- | --- | --- | --- | --- | --- | --- | --- | --- | --- | --- | --- | --- |
| 130 | 1.4.2.1.5 | **SW Architecture ARXML 's Development** |  | 7d | 2020-06-05 | 2020-06-16 |  | 2d |  | Soo-Jin Ahn | 112h |  |  |
| 131 | 1.4.2.1.5.1 | Adaptors Design in Davinci Developer. |  | 4d | 2020-06-05 | 2020-06-11 | 123, 141, 161, 181, 201 | 2d | 0d | Soo-Jin Ahn | 32h |  | W23-5 - W24-4 |
| 132 | 1.4.2.1.5.2 | Adaptors ARXML Generation for simulink import. |  | 1d | 2020-06-11 | 2020-06-12 | 131 | 2d | 0d | Soo-Jin Ahn | 8h |  | W24-4 - W24-5 |
| 133 | 1.4.2.1.5.3 | Scheduler for ASP SW Integration |  | 1d | 2020-06-12 | 2020-06-15 | 132 | 2d | 0d | Soo-Jin Ahn | 8h |  | W24-5 - W25-1 |
| 134 | 1.4.2.1.5.4 | Scheduler for SW Adaptors. |  | 1d | 2020-06-15 | 2020-06-16 | 133 | 2d | 0d | Soo-Jin Ahn | 8h |  | W25-1 - W25-2 |
| 135 | 1.4.2.1.6 | ARXML's Review for Basic SW & Adaptors Development |  | 1d | 2020-06-16 | 2020-06-17 | 134 | 2d | 0d | Soo-Jin Ahn; Choong-Yup Shin; Hoon Bae | 24h |  | W25-2 - W25-3 |
| 136 | 1.4.2.1.7 | ARXML's Release | milestone | 0d | 2020-06-17 | 2020-06-17 | 135 | 2d | 0d | Soo-Jin Ahn |  |  | W25-3 - W25-3 |
| 137 | 1.4.2.2 | **Adaptor 1 : FCA-Car/Ped Adaptor Development** |  | 17.5d | 2020-06-01 | 2020-06-25 |  | 0d |  | Hoon Bae | 298.4h | 26.4h |  |
| 138 | 1.4.2.2.1 | **Feature_SignalInterfaceMatrix** |  | 2d | 2020-06-01 | 2020-06-03 |  | 0d |  | Hoon Bae | 36h |  |  |
| 139 | 1.4.2.2.1.1 | Creation of SignalInterfaceMatrix |  | 12h | 2020-06-01 | 2020-06-03 | 123 | 0d |  | Hoon Bae | 12h |  | W23-1 - W23-3 |
| 140 | 1.4.2.2.1.2 | Review of SignalInterface Matrix |  | 4h | 2020-06-03 | 2020-06-03 | 139 | 0d |  | Hoon Bae; Soo-Jin Ahn | 8h |  | W23-3 - W23-3 |
| 141 | 1.4.2.2.1.3 | Release of FCA Car7Ped Adaptor SignalInterface Matrix | milestone | 0d | 2020-06-03 | 2020-06-03 | 140 | 0d |  | Hoon Bae |  |  | W23-3 - W23-3 |
| 142 | 1.4.2.2.2 | Adaptor Detailed Design( if it is a small gap FD has to do that, if it is a big gap FO has to do that). | milestone | 0d | 2020-06-05 | 2020-06-05 | 138, 181 | 0d |  | Hoon Bae |  |  | W23-5 - W23-5 |
| 143 | 1.4.2.2.3 | Adaptor Detailed Design Review | milestone | 0d | 2020-06-05 | 2020-06-05 | 142 | 0d |  | Hoon Bae; Soo-Jin Ahn |  |  | W23-5 - W23-5 |
| 144 | 1.4.2.2.4 | Release of FCA Car/Ped Adaptor Detailed Design | milestone | 0d | 2020-06-05 | 2020-06-05 | 143 | 0d |  | Hoon Bae |  |  | W23-5 - W23-5 |
| 145 | 1.4.2.2.5 | **Adaptor Simulink Development** |  | 11.5d | 2020-06-05 | 2020-06-23 |  | 0d |  | Hoon Bae | 140h |  |  |
| 146 | 1.4.2.2.5.1 | Simulink Design Development |  | 4d | 2020-06-05 | 2020-06-11 | 144 | 0d |  | Hoon Bae | 32h |  | W23-5 - W24-4 |
| 147 | 1.4.2.2.5.2 | Simulink Import of ARXML & linking to Development Models |  | 4h | 2020-06-19 | 2020-06-22 | 136, 186 | 0d |  | Hoon Bae | 4h |  | W25-5 - W26-1 |
| 148 | 1.4.2.2.5.3 | Simulink Design Release & Review |  | 4h | 2020-06-22 | 2020-06-22 | 147 | 0d |  | Hoon Bae; Soo-Jin Ahn | 8h |  | W26-1 - W26-1 |
| 149 | 1.4.2.2.5.4 | Adaptor Code Generation from Simulink. |  | 4h | 2020-06-22 | 2020-06-23 | 148 | 0d |  | Hoon Bae | 4h |  | W26-1 - W26-2 |
| 150 | 1.4.2.2.5.5 | Release of FCA-Car/Ped Adaptor Simulink Design | milestone | 0d | 2020-06-23 | 2020-06-23 | 149 | 0d |  | Hoon Bae |  |  | W26-2 - W26-2 |
| 151 | 1.4.2.2.6 | **SW Unit Test Specification & Test Cases Development** |  | 0d | 2020-06-23 | 2020-06-23 |  | 0d |  | Hoon Bae |  |  |  |
| 152 | 1.4.2.2.6.1 | Adaptor Unit Test Specification. | milestone | 0d | 2020-06-23 | 2020-06-23 | 150 | 0d |  | Hoon Bae |  |  | W26-2 - W26-2 |
| 153 | 1.4.2.2.6.2 | Adaptor Unit Test Cases Implementation. | milestone | 0d | 2020-06-23 | 2020-06-23 | 152 | 0d |  | Hoon Bae |  |  | W26-2 - W26-2 |
| 154 | 1.4.2.2.7 | Adaptor Unit Test Execution and its report generation. | milestone | 0d | 2020-06-23 | 2020-06-23 | 153 | 0d |  | Hoon Bae |  |  | W26-2 - W26-2 |
| 155 | 1.4.2.2.8 | SW Source Code & Unit Test Report Review |  | 2d | 2020-06-23 | 2020-06-25 | 154 | 0d |  | Hoon Bae; Soo-Jin Ahn | 32h |  | W26-2 - W26-4 |
| 156 | 1.4.2.2.9 | Release of FCA-Car/Ped SW Source Code & SW Unit Test Report | milestone | 0d | 2020-06-25 | 2020-06-25 | 155 | 0d |  | Hoon Bae |  |  | W26-4 - W26-4 |

Notes:
- 138: This is the signal interface matrix at / SWC level for supporting Archtecture
- 142: not applicable for R0
- 143: not applicable for R0
- 144: not applicable for R0
- 151: not applicable for R0
- 152: not applicable for R0
- 153: not applicable for R0
- 154: not applicable for R0

| ID | WBS | Task | Type | Duration | Start | Finish | Predecessors | Total slack | Free slack | Resources | Work | Actual work | CW |
| --- | --- | --- | --- | --- | --- | --- | --- | --- | --- | --- | --- | --- | --- |
| 157 | 1.4.2.3 | **Adaptor 2 : LKA-L Adaptor Development** |  | 16.5d | 2020-06-01 | 2020-06-24 |  | 0d | 1d | Choong-Yup Shin | 274.4h | 18.4h |  |
| 158 | 1.4.2.3.1 | **Signal Matrix preparation for Adaptor for architecture support.** |  | 2d | 2020-06-01 | 2020-06-03 |  | 1d |  | Choong-Yup Shin | 36h |  |  |
| 159 | 1.4.2.3.1.1 | Creation of SignalInterfaceMatrix |  | 12h | 2020-06-01 | 2020-06-03 | 123 | 1d | 0d | Choong-Yup Shin | 12h |  | W23-1 - W23-3 |
| 160 | 1.4.2.3.1.2 | Review & Release of SignalInterface Matrix |  | 4h | 2020-06-03 | 2020-06-03 | 159 | 1d | 0d | Soo-Jin Ahn; Choong-Yup Shin | 8h |  | W23-3 - W23-3 |
| 161 | 1.4.2.3.1.3 | Release of LKA-L Adaptor SignalInterface Matrix | milestone | 0d | 2020-06-03 | 2020-06-03 | 160 | 1d | 0d | Choong-Yup Shin |  |  | W23-3 - W23-3 |
| 162 | 1.4.2.3.2 | Adaptor Detailed Design( if it is a small gap FD has to do that, if it is a big gap FO has to do that). | milestone | 0d | 2020-06-05 | 2020-06-05 | 161, 201 | 1d | 0d | Choong-Yup Shin |  |  | W23-5 - W23-5 |
| 163 | 1.4.2.3.3 | Adaptor Detailed Design Review | milestone | 0d | 2020-06-05 | 2020-06-05 | 162 | 1d | 0d | Soo-Jin Ahn; Choong-Yup Shin |  |  | W23-5 - W23-5 |
| 164 | 1.4.2.3.4 | Release of LKA-L Adaptor Detailed Design | milestone | 0d | 2020-06-05 | 2020-06-05 | 163 | 1d | 0d | Choong-Yup Shin |  |  | W23-5 - W23-5 |
| 165 | 1.4.2.3.5 | **Adaptor Simulink Development** |  | 11.5d | 2020-06-05 | 2020-06-23 |  | 1d |  | Choong-Yup Shin | 140h |  |  |
| 166 | 1.4.2.3.5.1 | Simulink Design Development |  | 4d | 2020-06-05 | 2020-06-11 | 164 | 1d | 0d | Choong-Yup Shin | 32h |  | W23-5 - W24-4 |
| 167 | 1.4.2.3.5.2 | Simulink Import of ARXML & linking to Development Models |  | 4h | 2020-06-19 | 2020-06-22 | 136, 206 | 1d | 0d | Choong-Yup Shin | 4h |  | W25-5 - W26-1 |
| 168 | 1.4.2.3.5.3 | Simulink Design Release & Review |  | 4h | 2020-06-22 | 2020-06-22 | 167 | 1d | 0d | Choong-Yup Shin; Soo-Jin Ahn | 8h |  | W26-1 - W26-1 |
| 169 | 1.4.2.3.5.4 | Adaptor Code Generation from Simulink. |  | 4h | 2020-06-22 | 2020-06-23 | 168 | 1d | 0d | Choong-Yup Shin | 4h |  | W26-1 - W26-2 |
| 170 | 1.4.2.3.5.5 | Release of LKA-L Adaptor Simulink Design | milestone | 0h | 2020-06-23 | 2020-06-23 | 169 | 1d | 0d | Choong-Yup Shin |  |  | W26-2 - W26-2 |
| 171 | 1.4.2.3.6 | **SW Unit Test Specification & Test Cases Development** |  | 0d | 2020-06-23 | 2020-06-23 |  | 1d |  | Choong-Yup Shin |  |  |  |
| 172 | 1.4.2.3.6.1 | Adaptor Unit Test Specification. | milestone | 0d | 2020-06-23 | 2020-06-23 | 170 | 1d | 0d | Choong-Yup Shin |  |  | W26-2 - W26-2 |
| 173 | 1.4.2.3.6.2 | Adaptor Unit Test Cases Implementation. | milestone | 0d | 2020-06-23 | 2020-06-23 | 172 | 1d | 0d | Choong-Yup Shin |  |  | W26-2 - W26-2 |
| 174 | 1.4.2.3.7 | Adaptor Unit Test Execution and its report generation. | milestone | 0d | 2020-06-23 | 2020-06-23 | 173 | 1d | 0d | Choong-Yup Shin |  |  | W26-2 - W26-2 |
| 175 | 1.4.2.3.8 | SW Source Code & Unit Test Report Review |  | 1d | 2020-06-23 | 2020-06-24 | 174 | 1d | 0d | Choong-Yup Shin; Soo-Jin Ahn | 16h |  | W26-2 - W26-3 |
| 176 | 1.4.2.3.9 | Release of LKA_L SW Source Code & Unit Test Report | milestone | 0d | 2020-06-24 | 2020-06-24 | 175 | 1d | 0d | Choong-Yup Shin |  |  | W26-3 - W26-3 |
| 177 | 1.4.2.4 | **Vehicle Input Adaptor** |  | 19.5d | 2020-06-03 | 2020-07-01 |  | 0d |  | Hoon Bae | 368h |  |  |
| 178 | 1.4.2.4.1 | **Signal Matrix preparation for Adaptor for architecture support.** |  | 2d | 2020-06-03 | 2020-06-05 |  | 0d |  |  | 20h |  |  |
| 179 | 1.4.2.4.1.1 | Creation of SignalInterfaceMatrix |  | 12h | 2020-06-03 | 2020-06-05 | 123, 141 | 0d |  | Hoon Bae | 12h |  | W23-3 - W23-5 |
| 180 | 1.4.2.4.1.2 | Review & Release of SignalInterface Matrix |  | 4h | 2020-06-05 | 2020-06-05 | 179 | 0d |  | Soo-Jin Ahn; Hoon Bae | 8h |  | W23-5 - W23-5 |
| 181 | 1.4.2.4.1.3 | Release of Veh_Inp Adaptor SignalInterface Matrix | milestone | 0d | 2020-06-05 | 2020-06-05 | 180 | 0d |  | Hoon Bae |  |  | W23-5 - W23-5 |
| 182 | 1.4.2.4.2 | Adaptor Detailed Design( if it is a small gap FD has to do that, if it is a big gap FO has to do that). | milestone | 0d | 2020-06-11 | 2020-06-11 | 146, 178 | 0d |  | Hoon Bae |  |  | W24-4 - W24-4 |
| 183 | 1.4.2.4.3 | Adaptor Detailed Design Review | milestone | 0d | 2020-06-11 | 2020-06-11 | 182 | 0d |  | Soo-Jin Ahn; Hoon Bae |  |  | W24-4 - W24-4 |
| 184 | 1.4.2.4.4 | Release of Veh_Inp Adaptor Detailed Design | milestone | 0d | 2020-06-11 | 2020-06-11 | 183 | 0d |  | Hoon Bae |  |  | W24-4 - W24-4 |

Notes:
- 162: not applicable for R0
- 163: not applicable for R0
- 164: not applicable for R0
- 171: not applicable for R0
- 172: not applicable for R0
- 173: not applicable for R0
- 174: not applicable for R0
- 182: not applicable for R0
- 183: not applicable for R0
- 184: not applicable for R0

| ID | WBS | Task | Type | Duration | Start | Finish | Predecessors | Total slack | Free slack | Resources | Work | Actual work | CW |
| --- | --- | --- | --- | --- | --- | --- | --- | --- | --- | --- | --- | --- | --- |
| 185 | 1.4.2.4.5 | **Adaptor Simulink Development** |  | 12.5d | 2020-06-11 | 2020-06-30 |  | 0d |  | Hoon Bae | 176h |  |  |
| 186 | 1.4.2.4.5.1 | Simulink Design Development |  | 6d | 2020-06-11 | 2020-06-19 | 184 | 0d |  | Hoon Bae | 48h |  | W24-4 - W25-5 |
| 187 | 1.4.2.4.5.2 | Simulink Import of ARXML & linking to Development Models |  | 4h | 2020-06-25 | 2020-06-25 | 136, 156 | 0d |  | Hoon Bae | 4h |  | W26-4 - W26-4 |
| 188 | 1.4.2.4.5.3 | Simulink Design Release & Review |  | 4h | 2020-06-25 | 2020-06-26 | 187 | 0d |  | Hoon Bae; Soo-Jin Ahn | 8h |  | W26-4 - W26-5 |
| 189 | 1.4.2.4.5.4 | Adaptor Code Generation from Simulink. |  | 2d | 2020-06-26 | 2020-06-30 | 188 | 0d |  | Hoon Bae | 16h |  | W26-5 - W27-2 |
| 190 | 1.4.2.4.5.5 | Release of Veh_Inp Adaptor Simulink Design | milestone | 0d | 2020-06-30 | 2020-06-30 | 189 | 0d |  | Hoon Bae |  |  | W27-2 - W27-2 |
| 191 | 1.4.2.4.6 | **SW Unit Test Specification & Test Cases Development** |  | 0d | 2020-06-30 | 2020-06-30 |  | 0d |  | Hoon Bae |  |  |  |
| 192 | 1.4.2.4.6.1 | Adaptor Unit Test Specification. | milestone | 0d | 2020-06-30 | 2020-06-30 | 190 | 0d |  | Hoon Bae |  |  | W27-2 - W27-2 |
| 193 | 1.4.2.4.6.2 | Adaptor Unit Test Cases Implementation. | milestone | 0d | 2020-06-30 | 2020-06-30 | 192 | 0d |  | Hoon Bae |  |  | W27-2 - W27-2 |
| 194 | 1.4.2.4.7 | Adaptor Unit Test Execution and its report generation. | milestone | 0d | 2020-06-30 | 2020-06-30 | 193 | 0d |  | Hoon Bae |  |  | W27-2 - W27-2 |
| 195 | 1.4.2.4.8 | SW Source Code & Unit Test Report Review |  | 1d | 2020-06-30 | 2020-07-01 | 194 | 0d |  | Soo-Jin Ahn; Hoon Bae | 16h |  | W27-2 - W27-3 |
| 196 | 1.4.2.4.9 | Release of Vhe_In Adaptor SW Source Code & Unit Test Report | milestone | 0d | 2020-07-01 | 2020-07-01 | 195 | 0d |  | Hoon Bae |  |  | W27-3 - W27-3 |
| 197 | 1.4.2.5 | **Vehicle Output Adaptor** |  | 18.5d | 2020-06-03 | 2020-06-30 |  | 0d | 11d | Choong-Yup Shin | 300h | 36h |  |
| 198 | 1.4.2.5.1 | **Signal Matrix preparation for Adaptor for architecture support.** |  | 2d | 2020-06-03 | 2020-06-05 |  | 1d |  |  | 20h |  |  |
| 199 | 1.4.2.5.1.1 | Creation of SignalInterfaceMatrix |  | 12h | 2020-06-03 | 2020-06-05 | 123, 161 | 1d | 0d | Choong-Yup Shin | 12h |  | W23-3 - W23-5 |
| 200 | 1.4.2.5.1.2 | Review & Release of SignalInterface Matrix |  | 4h | 2020-06-05 | 2020-06-05 | 199 | 1d | 0d | Soo-Jin Ahn; Choong-Yup Shin | 8h |  | W23-5 - W23-5 |
| 201 | 1.4.2.5.1.3 | Release of Veh_Out Adaptor SignalInterface Matrix | milestone | 0d | 2020-06-05 | 2020-06-05 | 200 | 1d | 0d | Choong-Yup Shin |  |  | W23-5 - W23-5 |
| 202 | 1.4.2.5.2 | Adaptor Detailed Design( if it is a small gap FD has to do that, if it is a big gap FO has to do that). | milestone | 0d | 2020-06-11 | 2020-06-11 | 166, 198 | 1d | 0d | Choong-Yup Shin |  |  | W24-4 - W24-4 |
| 203 | 1.4.2.5.3 | Adaptor Detailed Design Review | milestone | 0d | 2020-06-11 | 2020-06-11 | 202 | 23.5d |  | Soo-Jin Ahn; Choong-Yup Shin |  |  | W24-4 - W24-4 |
| 204 | 1.4.2.5.4 | Release of Veh_Out Adaptor Detailed Design | milestone | 0d | 2020-06-11 | 2020-06-11 | 202 | 1d | 0d | Choong-Yup Shin |  |  | W24-4 - W24-4 |
| 205 | 1.4.2.5.5 | **Adaptor Simulink Development** |  | 11.5d | 2020-06-11 | 2020-06-29 |  | 1d |  | Choong-Yup Shin | 164h |  |  |
| 206 | 1.4.2.5.5.1 | Simulink Design Development |  | 6d | 2020-06-11 | 2020-06-19 | 204 | 1d | 0d | Choong-Yup Shin | 48h |  | W24-4 - W25-5 |
| 207 | 1.4.2.5.5.2 | Simulink Import of ARXML & linking to Development Models |  | 4h | 2020-06-24 | 2020-06-24 | 136, 176 | 1d | 0d | Choong-Yup Shin | 4h |  | W26-3 - W26-3 |
| 208 | 1.4.2.5.5.3 | Simulink Design Release & Review |  | 4h | 2020-06-24 | 2020-06-25 | 207 | 1d | 0d | Choong-Yup Shin | 4h |  | W26-3 - W26-4 |
| 209 | 1.4.2.5.5.4 | Adaptor Code Generation from Simulink. |  | 2d | 2020-06-25 | 2020-06-29 | 208 | 1d | 0d | Choong-Yup Shin | 16h |  | W26-4 - W27-1 |
| 210 | 1.4.2.5.5.5 | Release of Veh_Out Adaptor Simulink Design | milestone | 0d | 2020-06-29 | 2020-06-29 | 209 | 1d | 0d | Choong-Yup Shin |  |  | W27-1 - W27-1 |

Notes:
- 191: not applicable for R0
- 192: not applicable for R0
- 193: not applicable for R0
- 194: not applicable for R0
- 202: not applicable for R0
- 203: not applicable for R0
- 204: not applicable for R0

| ID | WBS | Task | Type | Duration | Start | Finish | Predecessors | Total slack | Free slack | Resources | Work | CW |
| --- | --- | --- | --- | --- | --- | --- | --- | --- | --- | --- | --- | --- |
| 211 | 1.4.2.5.6 | **SW Unit Test Specification & Test Cases Development** |  | 0d | 2020-06-29 | 2020-06-29 |  | 1d |  | Choong-Yup Shin |  |  |
| 212 | 1.4.2.5.6.1 | Adaptor Unit Test Specification. | milestone | 0d | 2020-06-29 | 2020-06-29 | 210 | 1d | 0d | Choong-Yup Shin |  | W27-1 - W27-1 |
| 213 | 1.4.2.5.6.2 | Adaptor Unit Test Cases Implementation. | milestone | 0d | 2020-06-29 | 2020-06-29 | 212 | 1d | 0d | Choong-Yup Shin |  | W27-1 - W27-1 |
| 214 | 1.4.2.5.7 | Adaptor Unit Test Execution and its report generation. | milestone | 0d | 2020-06-29 | 2020-06-29 | 213 | 1d | 0d | Choong-Yup Shin |  | W27-1 - W27-1 |
| 215 | 1.4.2.5.8 | SW Source Code & Unit Test Report Review |  | 1d | 2020-06-29 | 2020-06-30 | 214 | 1d | 0d | Choong-Yup Shin; Soo-Jin Ahn | 16h | W27-1 - W27-2 |
| 216 | 1.4.2.5.9 | Release of Veh_Out Adaptor SW Source Code & Unit Test Report | milestone | 0d | 2020-06-30 | 2020-06-30 | 215 | 1d |  | Choong-Yup Shin |  | W27-2 - W27-2 |
| 217 | 1.4.2.6 | **SW Integration** |  | 70.3d | 2020-04-06 | 2020-07-15 |  | 0d |  |  |  |  |
| 218 | 1.4.2.6.1 | SW Integration Test Specification. |  | 4d | 2020-04-06 | 2020-04-09 | 119 | 64.3d | 0d |  |  | W15-1 - W15-4 |
| 219 | 1.4.2.6.2 | SW Integration Test Cases Implementation. |  | 2d | 2020-04-10 | 2020-04-13 | 218 | 64.3d |  |  |  | W15-5 - W16-1 |
| 220 | 1.4.2.6.3 | SW Integration. |  | 4d | 2020-07-01 | 2020-07-07 | 155, 176, 196, 216 | 0d |  |  |  | W27-3 - W28-2 |
| 221 | 1.4.2.6.4 | SW Integration Test execution & Its Rerport Generation. |  | 2d | 2020-07-07 | 2020-07-09 | 220 | 0d |  |  |  | W28-2 - W28-4 |
| 222 | 1.4.2.6.5 | SW Version Management. |  | 3d | 2020-07-07 | 2020-07-10 | 220 | 2d | 0d |  |  | W28-2 - W28-5 |
| 223 | 1.4.2.6.6 | SW Release Notes. |  | 1d | 2020-07-10 | 2020-07-13 | 222 | 2d |  |  |  | W28-5 - W29-1 |
| 224 | 1.4.2.6.7 | HKMC SW Integration |  | 1d | 2020-07-09 | 2020-07-10 | 221 | 0d |  |  |  | W28-4 - W28-5 |
| 225 | 1.4.2.6.8 | HKMC Application SW Release | milestone | 0d | 2020-07-10 | 2020-07-10 | 224 | 0d |  |  |  | W28-5 - W28-5 |
| 226 | 1.4.2.6.9 | App SW Integration Testing on MCU |  | 2d | 2020-07-13 | 2020-07-15 | 229 | 0d |  |  |  | W29-1 - W29-3 |
| 227 | 1.4.2.6.10 | HKMC Application SW Release for Testing | milestone | 0d | 2020-07-15 | 2020-07-15 | 226 | 0d |  |  |  | W29-3 - W29-3 |
| 228 | 1.4.3 | **Basic SW** |  | 1d | 2020-07-10 | 2020-07-13 |  | 0d |  |  |  |  |
| 229 | 1.4.3.1 | SW Integration Review |  | 1d | 2020-07-10 | 2020-07-13 | 225 | 0d |  |  |  | W28-5 - W29-1 |

Notes:
- 211: not applicable for R0
- 212: not applicable for R0
- 213: not applicable for R0
- 214: not applicable for R0
- 224: (Buildable Application SW on GIT repo together with HKMC Basic SW
- 226: Need to Follow Basic SW Integration Release
